# grupo 3 Duracion y precedencias.

Schedule from MS Project, 2025-09-30 to 2025-11-10, costs in $.

## Calendars

- Estándar: Mon-Fri 09:00-13:00, 15:00-19:00; Sat-Sun off.

## Resources

| Resource | Rate | Cost per use |
| --- | --- | --- |
| Desarrollador full stack | 38410 |  |
| Desarrollador full stack 2 | 38410 |  |
| Analista Junior | 18350 |  |
| Arquitecto de SW | 35000 |  |
| Desarrolador Backend | 35000 |  |
| DevOps | 46354 |  |
| Analista Junior 2 | 18350 |  |
| Dispositivo NAS |  | 1776000 |
| Servidor VPS |  | 300000 |
| Jefe PROYECTO |  | 1200000 |

## Schedule

| ID | WBS | Task | Type | Duration | Start | Finish | Predecessors | Total slack | Free slack | Resources | Work | Cost |
| --- | --- | --- | --- | --- | --- | --- | --- | --- | --- | --- | --- | --- |
| 1 | 1 | **Proyecto POS Corralon "M"** |  | 29.6d | 2025-09-30 | 2025-11-10 |  | 0d |  | Jefe PROYECTO | 313.84h | 16,204,066.92 |
| 2 | 1.1 | **Inicio** |  | 6.9d | 2025-09-30 | 2025-10-08 |  | 0d |  |  | 88.24h | 1,872,924 |
| 3 | 1.1.1 | Entrevistar a los dueños |  | 0.4d | 2025-09-30 | 2025-09-30 |  | 0d |  | Analista Junior | 3.2h | 58,720 |
| 4 | 1.1.2 | Obtener el libro de ventas |  | 0.18d | 2025-09-30 | 2025-09-30 | 3 | 11.47d | 0d | Analista Junior 2 | 1.44h | 26,424 |
| 5 | 1.1.3 | Analizar la estructura del libro de ventas |  | 1d | 2025-09-30 | 2025-10-01 | 4 | 11.47d | 0.82d | Desarrollador full stack; Analista Junior 2 | 16h | 454,080 |
| 6 | 1.1.4 | Realizar el analisis de requerimientos |  | 2d | 2025-09-30 | 2025-10-02 | 3 | 0d |  | Analista Junior | 16h | 293,600 |
| 7 | 1.1.5 | Redactar casos de uso y reglas de negocio |  | 1d | 2025-10-02 | 2025-10-03 | 5, 6 | 11.65d | 1d | Analista Junior 2 | 8h | 146,800 |
| 8 | 1.1.6 | Definir requerimientos no funcionales. |  | 2d | 2025-10-02 | 2025-10-06 | 5, 6 | 0d |  | Analista Junior | 16h | 293,600 |
| 9 | 1.1.7 | Documentar los requerimientos |  | 2d | 2025-10-06 | 2025-10-08 | 7, 8 | 0d |  | Analista Junior 2 | 16h | 293,600 |
| 10 | 1.1.8 | Priorizar requisitos |  | 0.5d | 2025-10-08 | 2025-10-08 | 9 | 0d |  | Analista Junior; Arquitecto de SW | 8h | 213,400 |
| 11 | 1.1.9 | Verificar el documento de requerimientos con el cliente |  | 0.25d | 2025-10-08 | 2025-10-08 | 9 | 10.7d | 0d | Analista Junior 2 | 2h | 36,700 |
| 12 | 1.1.10 | Estudiar documentacion de la API del sw enlatado |  | 0.2d | 2025-10-08 | 2025-10-08 | 11 | 10.7d | 0.05d | Desarrolador Backend | 1.6h | 56,000 |
| 13 | 1.1.12 | Modelo de casos de uso y requerimientos especificos terminado | milestone | 0d | 2025-10-08 | 2025-10-08 | 10, 11, 12 | 0d |  |  |  |  |
| 14 | 1.2 | **Elaboración** |  | 5.95d | 2025-10-08 | 2025-10-16 |  | 0d |  |  | 85.6h | 4,750,308 |
| 15 | 1.2.1 | Analizar caracteristicas, documentacion y diseño del sistema similar |  | 1d | 2025-10-08 | 2025-10-09 | 13 | 0d |  | Arquitecto de SW | 8h | 280,000 |
| 16 | 1.2.3 | Diseñar modelo conceptual |  | 0.7d | 2025-10-09 | 2025-10-10 | 15 | 0d |  | Analista Junior | 5.6h | 102,760 |
| 17 | 1.2.4 | Definir tablas y atributos de la base de datos |  | 2d | 2025-10-10 | 2025-10-14 | 16, 18SS, 19SS, 20SS | 0d |  | Analista Junior 2 | 16h | 293,600 |
| 18 | 1.2.5 | Definir el diseño e Informacion de las pantallas |  | 2d | 2025-10-10 | 2025-10-14 | 16 | 0d |  | Desarrollador full stack | 16h | 614,560 |
| 19 | 1.2.6 | Definir los procesos a realizar |  | 1d | 2025-10-10 | 2025-10-13 | 16 | 0d |  | Arquitecto de SW | 8h | 280,000 |
| 20 | 1.2.7 | Definir los flujos de trabajo |  | 0.5d | 2025-10-10 | 2025-10-13 | 16 | 0d |  | Desarrollador full stack 2 | 4h | 153,640 |
| 21 | 1.2.8 | diseñar el prototipo arquitectónico base |  | 1.5d | 2025-10-14 | 2025-10-16 | 17, 18, 19, 20 | 0d |  | Arquitecto de SW | 12h | 420,000 |
| 22 | 1.2.8 | Evaluar opciones de infraestructura en la nube |  | 0.25d | 2025-10-16 | 2025-10-16 | 21 | 0d |  | Analista Junior | 2h | 36,700 |
| 23 | 1.2.9 | Contratar servicio en la nube |  | 0.25d | 2025-10-16 | 2025-10-16 | 22SS, 21 | 0d |  | Arquitecto de SW; Servidor VPS | 2h | 370,000 |
| 24 | 1.2.10 | Adquirir disco fisico para backups |  | 0.25d | 2025-10-16 | 2025-10-16 | 21 | 0d |  | Analista Junior 2; Dispositivo NAS | 2h | 1,812,700 |
| 25 | 1.2.11 | Configurar servidor en la nube lo antes posible |  | 0.5d | 2025-10-16 | 2025-10-16 | 23 | 0d |  | Desarrollador full stack; DevOps [50%] | 6h | 246,348 |
| 26 | 1.2.12 | Configurar backups |  | 0.5d | 2025-10-16 | 2025-10-16 | 24 | 0d |  | Desarrolador Backend | 4h | 140,000 |
| 27 | 1.2.9 | Modelo de Arquitectura Terminado | milestone | 0d | 2025-10-16 | 2025-10-16 | 26, 25 | 0d |  |  |  |  |

| ID | WBS | Task | Type | Duration | Start | Finish | Predecessors | Total slack | Resources | Work | Cost |
| --- | --- | --- | --- | --- | --- | --- | --- | --- | --- | --- | --- |
| 28 | 1.3 | **Construcción** |  | 10.5d | 2025-10-16 | 2025-10-31 |  | 0d |  | 88h | 3,352,800 |
| 29 | 1.3.1 | Desarrollar modulo de informes y consultas |  | 3d | 2025-10-16 | 2025-10-21 | 27 | 0d | Desarrollador full stack | 24h | 921,840 |
| 30 | 1.3.2 | Desarrollar servicios de api de facturacion. |  | 1d | 2025-10-21 | 2025-10-22 | 29 | 0d | Desarrolador Backend | 8h | 280,000 |
| 31 | 1.1.11 | Desarrollar el modulo de ventas y pagos |  | 2d | 2025-10-22 | 2025-10-27 | 30 | 0d | Desarrollador full stack | 16h | 614,560 |
| 32 | 1.3.3 | Desarrollar el modulo de proveedores y gestion de compras |  | 2d | 2025-10-27 | 2025-10-29 | 31 | 0d | Desarrollador full stack 2 | 16h | 614,560 |
| 33 | 1.3.5 | Desarrollar servicios de consumo de api de inventario |  | 1d | 2025-10-21 | 2025-10-22 | 30SS | 4.5d | Desarrollador full stack | 8h | 307,280 |
| 34 | 1.3.6 | Integrar módulos del sistema |  | 1d | 2025-10-29 | 2025-10-30 | 33, 29, 30, 31, 32 | 0d | Desarrollador full stack | 8h | 307,280 |
| 35 | 1.3.7 | Testear beta del sistema version beta |  | 1d | 2025-10-30 | 2025-10-31 | 34 | 0d | Desarrollador full stack | 8h | 307,280 |
| 36 | 1.3.4 | Version beta del sistema entregada | milestone | 0d | 2025-10-31 | 2025-10-31 | 35 | 0d |  |  |  |
| 37 | 1.6 | **Transición** |  | 6.25d | 2025-10-31 | 2025-11-10 |  | 0d |  | 52h | 1,579,432 |
| 38 | 1.6.1 | confeccionar manual de usuario para uso del software |  | 0.75d | 2025-10-31 | 2025-11-03 | 36 | 0d | Analista Junior; Analista Junior 2 | 12h | 220,200 |
| 39 | 1.6.2 | Capacitar al personal |  | 1.5d | 2025-11-03 | 2025-11-04 | 38 | 0d | Analista Junior | 12h | 220,200 |
| 40 | 1.6.3 | Poner en accion el nuevo sistema |  | 1d | 2025-11-04 | 2025-11-06 | 39 | 0d | DevOps | 8h | 370,832 |
| 41 | 1.6.4 | Realizar pruebas unitarias y de aceptación con casos de uso reales. |  | 1d | 2025-11-06 | 2025-11-07 | 40 | 0d | Desarrollador full stack | 8h | 307,280 |
| 42 | 1.6.5 | Ajustar los problemas del sistema según el feedback que tenga |  | 1.5d | 2025-11-07 | 2025-11-10 | 41 | 0d | Desarrollador full stack | 12h | 460,920 |
| 43 | 1.6.6 | Sistema con ajustes finales entregado | milestone | 0d | 2025-11-10 | 2025-11-10 | 42 | 0d |  |  |  |
| 44 | 1.6.7 | sistema terminado e integrado con el sistema anterior | milestone | 0d | 2025-11-10 | 2025-11-10 | 37 | 0d |  |  |  |
